# 需求分析文档

Schedule from MS Project, 2017-10-23 to 2018-01-14, 1 hours a day, A marks actual dates.

## Calendars

- 标准: Mon-Sun 21:00-22:00. Exceptions (off unless hours are given): 2017-10-31 21:00-23:59 (加班), 2017-11-01 00:00-02:00, 21:00-22:00 (加班), 2017-11-03 21:00-23:00 (加班), 2017-11-04 21:00-23:30 (加班), 2017-11-05 21:00-23:00 (加班), 2017-11-16 18:00-19:00, 21:00-22:00 (加班), 2017-11-17 11:00-12:00, 21:00-22:00 (加班), 2017-11-24 09:30-10:30, 21:00-22:00 (加班).

## Resources

| Resource |
| --- |
| 郑丁公 |
| 嵇德宏 |
| 谢正树 |
| 张天颖 |
| 张晓钒 |

## Schedule

| ID | WBS | Task | Type | Duration | Start | Finish | Predecessors | Complete | Resources | Work | 负责人 |
| --- | --- | --- | --- | --- | --- | --- | --- | --- | --- | --- | --- |
| 1 | 1 | 第一次需求访谈预约 | milestone, manual | 0d | 2017-10-26 A | 2017-10-26 A |  | 100% |  |  |  |
| 2 | 2 | **需求工程计划** |  | 58.48d | 2017-10-23 | 2017-12-09 |  |  |  | 124.98h |  |
| 3 | 2.1 | 选择合适的生命周期模型 | manual | 0.5d | 2017-10-23 | 2017-10-23 |  |  | 郑丁公 | 0.5h | 郑丁公 |
| 4 | 2.2 | 规划需求方案 | manual | 0.5d | 2017-10-23 | 2017-10-23 | 3 |  | 谢正树 [50%]; 嵇德宏 [50%] | 0.5h | 谢正树 |
| 5 | 2.3 | 估算需求工作量 | manual | 0.5d | 2017-10-24 | 2017-10-24 | 4 |  | 郑丁公 | 0.5h | 郑丁公 |
| 6 | 2.4 | 发现需求决策者 | manual | 0.5d | 2017-10-24 | 2017-10-24 | 5 |  | 嵇德宏 [25%]; 谢正树 [75%] | 0.5h | 嵇德宏 |
| 7 | 2.5 | UML翻转课堂制作，各项文档ppt制作 | manual | 3.98d | 2017-10-31 | 2017-11-01 |  |  | 郑丁公 | 3.98h | 郑丁公 |
| 8 | 2.6 | **需求获取与分析** |  | 46.5d | 2017-11-02 | 2017-11-30 | 1 |  |  | 61.5h |  |
| 9 | 2.6.1 | 第一次需求访谈 | manual | 0.5d | 2017-11-02 | 2017-11-02 | 1 |  | 谢正树; 张天颖; 张晓钒; 郑丁公 | 2h | 郑丁公 |
| 10 | 2.6.2 | **定义愿景和范围（出愿景和范围文档）** |  | 3d | 2017-11-03 | 2017-11-04 |  |  |  | 2h | 郑丁公 |
| 11 | 2.6.2.1 | 关联图 | manual | 0.5d | 2017-11-03 | 2017-11-03 |  |  | 郑丁公 | 0.5h |  |
| 12 | 2.6.2.2 | 生态系统图 | manual | 0.5d | 2017-11-03 | 2017-11-03 | 11 |  | 郑丁公 | 0.5h |  |
| 13 | 2.6.2.3 | 特性树 | manual | 0.5d | 2017-11-04 | 2017-11-04 | 12 |  | 郑丁公 | 0.5h |  |
| 14 | 2.6.2.4 | 事件列表 | manual | 0.5d | 2017-11-04 | 2017-11-04 | 13 |  | 郑丁公 | 0.5h |  |
| 15 | 2.6.3 | **识别用户群** |  | 2d | 2017-11-05 | 2017-11-05 | 10 |  |  | 2h | 谢正树 |
| 16 | 2.6.3.1 | 识别用户类别 | manual | 1d | 2017-11-05 | 2017-11-05 |  |  | 张晓钒 | 1h |  |
| 17 | 2.6.3.2 | 与用户代表取得联系 | manual | 0.5d | 2017-11-05 | 2017-11-05 | 16 |  | 谢正树 | 0.5h |  |
| 18 | 2.6.3.3 | 处理需求冲突 | manual | 0.5d | 2017-11-05 | 2017-11-05 | 17 |  | 张天颖 | 0.5h |  |
| 19 | 2.6.4 | 选择产品代言人 | manual | 0.5d | 2017-11-06 | 2017-11-06 | 15 |  | 张晓钒 | 0.5h | 张晓钒 |
| 20 | 2.6.5 | 组织焦点小组 | manual | 0.5d | 2017-11-06 | 2017-11-06 | 19 |  | 张晓钒 | 0.5h | 张晓钒 |
| 21 | 2.6.6 | 识别用户需求 | manual | 0.5d | 2017-11-07 | 2017-11-07 | 20 |  | 张晓钒 | 0.5h | 张晓钒 |
| 22 | 2.6.7 | 识别系统事件和响应 | manual | 0.5d | 2017-11-07 | 2017-11-07 | 21 |  | 张晓钒 | 0.5h | 张晓钒 |
| 23 | 2.6.8 | v&s文档初步 | manual | 2d | 2017-11-08 | 2017-11-09 | 22 |  | 嵇德宏 | 2h | 嵇德宏 |
| 24 | 2.6.9 | 第二次需求访谈预约 | milestone, manual | 0d | 2017-11-08 | 2017-11-08 |  |  |  |  |  |

| ID | WBS | Task | Type | Duration | Start | Finish | Predecessors | Resources | Work | 负责人 |
| --- | --- | --- | --- | --- | --- | --- | --- | --- | --- | --- |
| 25 | 2.6.10 | **第五周UML翻转课堂** |  | 6d | 2017-11-05 | 2017-11-10 |  |  | 8h | 郑丁公 |
| 26 | 2.6.10.1 | ppt制作 | manual | 4d | 2017-11-07 | 2017-11-10 |  | 郑丁公 | 4h | 郑丁公 |
| 27 | 2.6.10.2 | UML教学（郑丁公） | manual | 4d | 2017-11-05 | 2017-11-06 |  | 嵇德宏 [25%]; 谢正树 [25%]; 张天颖 [25%]; 郑丁公 [25%] | 4h | 郑丁公 |
| 28 | 2.6.10.3 | 翻转课堂评审 | manual | 0.25d | 2017-11-10 | 2017-11-10 |  |  |  | 郑丁公 |
| 29 | 2.6.11 | **第六周UML基础翻转课堂** |  | 11d | 2017-11-11 | 2017-11-19 | 25 |  | 6h | 郑丁公 |
| 30 | 2.6.11.1 | 用例图 | manual | 0.5d | 2017-11-11 | 2017-11-11 |  | 郑丁公 | 0.5h | 郑丁公 |
| 31 | 2.6.11.2 | 类图 | manual | 0.5d | 2017-11-11 | 2017-11-11 |  | 郑丁公 | 0.5h | 郑丁公 |
| 32 | 2.6.11.3 | 状态图 | manual | 1d | 2017-11-11 | 2017-11-11 |  | 谢正树 | 1h | 谢正树 |
| 33 | 2.6.11.4 | 顺序图 | manual | 1d | 2017-11-11 | 2017-11-11 |  | 张晓钒 | 1h | 张晓钒 |
| 34 | 2.6.11.5 | 部署图 | manual | 1d | 2017-11-11 | 2017-11-11 |  | 嵇德宏 | 1h | 嵇德宏 |
| 35 | 2.6.11.6 | 协作图 | manual | 1d | 2017-11-11 | 2017-11-11 |  | 张天颖 | 1h | 张天颖 |
| 36 | 2.6.11.7 | PPT制作 | manual | 1d | 2017-11-12 | 2017-11-12 |  | 郑丁公 | 1h | 郑丁公 |
| 37 | 2.6.11.8 | 翻转课堂评审 | manual | 1d | 2017-11-15 | 2017-11-15 |  |  |  |  |
| 38 | 2.6.12 | **第二次需求访谈** |  | 13d | 2017-11-16 | 2017-11-19 | 23 |  | 9h | 郑丁公 |
| 39 | 2.6.12.1 | 需求访谈-老师（功能与界面） | manual | 1d | 2017-11-16 | 2017-11-16 | 24 | 嵇德宏; 谢正树; 张天颖; 张晓钒; 郑丁公 | 5h | 郑丁公 |
| 40 | 2.6.12.2 | 需求访谈-学生（功能与界面） | manual | 0.5d | 2017-11-16 | 2017-11-16 |  | 嵇德宏; 谢正树; 张天颖 | 1.5h | 郑丁公 |
| 41 | 2.6.12.3 | 需求访谈-管理员（功能与界面） | manual | 0.5d | 2017-11-16 | 2017-11-16 |  | 嵇德宏; 谢正树; 张天颖 | 1.5h | 郑丁公 |
| 42 | 2.6.12.4 | 需求访谈整理 | manual | 1d | 2017-11-17 | 2017-11-17 | 39, 40, 41 | 张天颖 [50%]; 嵇德宏 [50%] | 1h | 嵇德宏 |
| 43 | 2.6.13 | 举行引导式需求获取讨论会 | manual | 0.5d | 2017-11-17 | 2017-11-17 | 42 | 嵇德宏 [20%]; 谢正树 [20%]; 张天颖 [20%]; 张晓钒 [20%]; 郑丁公 [20%] | 0.5h | 郑丁公 |
| 44 | 2.6.14 | 观察用户如何完成工作 | manual | 0.5d | 2017-11-17 | 2017-11-17 | 43 | 张天颖 | 0.5h | 张天颖 |
| 45 | 2.6.15 | 分发调查问卷 | manual | 0.5d | 2017-11-18 | 2017-11-18 | 44 | 张天颖 [50%]; 张晓钒 [50%] | 0.5h | 张晓钒 |
| 46 | 2.6.16 | 分析文档 | manual | 0.5d | 2017-11-18 | 2017-11-18 | 45 | 嵇德宏 [25%]; 谢正树 [25%]; 张天颖 [25%]; 张晓钒 [25%] | 0.5h | 谢正树 |
| 47 | 2.6.17 | 检查问题报告 | manual | 0.5d | 2017-11-19 | 2017-11-19 | 46 | 郑丁公 | 0.5h | 郑丁公 |
| 48 | 2.6.18 | 重用已有的需求 | manual | 0.5d | 2017-11-19 | 2017-11-19 | 47 | 嵇德宏 | 0.5h |  |
| 49 | 2.6.19 | UI和功能初步设计 | manual | 3d | 2017-11-20 | 2017-11-22 | 48 | 嵇德宏 [40%]; 谢正树 [50%]; 张天颖 [10%] | 3h | 谢正树 |

| ID | WBS | Task | Type | Duration | Start | Finish | Predecessors | Resources | Work | 负责人 |
| --- | --- | --- | --- | --- | --- | --- | --- | --- | --- | --- |
| 50 | 2.6.20 | **第一次需求分析** |  | 4d | 2017-11-20 | 2017-11-23 | 38 |  | 8.5h | 郑丁公 |
| 51 | 2.6.20.1 | 应用环境建模 | manual | 0.5d | 2017-11-20 | 2017-11-20 | 48 | 郑丁公 | 0.5h |  |
| 52 | 2.6.20.2 | 创建原型 | manual | 0.5d | 2017-11-20 | 2017-11-20 | 51 | 郑丁公 | 0.5h |  |
| 53 | 2.6.20.3 | 分析可实现性 | manual | 0.5d | 2017-11-21 | 2017-11-21 | 52 | 张天颖 | 0.5h |  |
| 54 | 2.6.20.4 | 排列需求优先级 | manual | 0.5d | 2017-11-21 | 2017-11-21 | 53 | 嵇德宏 | 0.5h |  |
| 55 | 2.6.20.5 | 创建数据字典 | manual | 0.5d | 2017-11-22 | 2017-11-22 | 54 | 谢正树 | 0.5h |  |
| 56 | 2.6.20.6 | **需求建模** |  | 3d | 2017-11-20 | 2017-11-22 | 55 |  | 5h | 张晓钒 |
| 57 | 2.6.20.6.1 | 数据流图 | manual | 0.5d | 2017-11-20 | 2017-11-20 |  | 张晓钒 | 0.5h |  |
| 58 | 2.6.20.6.2 | 流程图 | manual | 1.5d | 2017-11-20 | 2017-11-21 |  | 张晓钒 | 1.5h |  |
| 59 | 2.6.20.6.3 | 状态转化图 | manual | 1d | 2017-11-21 | 2017-11-21 |  | 嵇德宏 [10%]; 谢正树 [50%]; 张天颖 [40%] | 1h |  |
| 60 | 2.6.20.6.4 | 对话图 | manual | 1d | 2017-11-21 | 2017-11-21 |  | 郑丁公 | 1h |  |
| 61 | 2.6.20.6.5 | 需求树 | manual | 0.5d | 2017-11-22 | 2017-11-22 |  | 嵇德宏 | 0.5h |  |
| 62 | 2.6.20.6.6 | 决策树 | manual | 0.5d | 2017-11-22 | 2017-11-22 |  | 郑丁公 | 0.5h |  |
| 63 | 2.6.20.7 | 分析接口 | manual | 0.5d | 2017-11-23 | 2017-11-23 | 56 | 郑丁公 | 0.5h | 郑丁公 |
| 64 | 2.6.20.8 | 将需求分配到子系统 | manual | 0.5d | 2017-11-23 | 2017-11-23 | 63 | 张天颖 | 0.5h | 张天颖 |
| 65 | 2.6.21 | 第三次需求访谈预约 | milestone, manual | 0d | 2017-11-22 | 2017-11-22 |  |  |  |  |
| 66 | 2.6.22 | **第三次需求访谈** |  | 2d | 2017-11-24 | 2017-11-24 | 50 |  | 8h | 郑丁公 |
| 67 | 2.6.22.1 | 需求访谈-老师 | manual | 1d | 2017-11-24 | 2017-11-24 | 49, 65 | 嵇德宏; 谢正树; 张天颖; 张晓钒; 郑丁公 | 5h |  |
| 68 | 2.6.22.2 | 需求访谈-学生 | manual | 0.5d | 2017-11-24 | 2017-11-24 | 49 | 嵇德宏; 谢正树; 张天颖 | 1.5h |  |
| 69 | 2.6.22.3 | 需求访谈-管理员 | manual | 0.5d | 2017-11-24 | 2017-11-24 | 49 | 嵇德宏; 谢正树; 张天颖 | 1.5h |  |
| 70 | 2.6.23 | 第二次需求分析 | manual | 2d | 2017-11-24 | 2017-11-25 | 67, 68, 69 | 张晓钒 [50%]; 郑丁公 [50%] | 2h | 郑丁公 |
| 71 | 2.6.24 | UI和功能的改善 | manual | 4d | 2017-11-26 | 2017-11-29 | 70 | 嵇德宏 [25%]; 谢正树 [50%]; 张天颖 [25%] | 4h | 谢正树 |
| 72 | 2.7 | **需求工程计划** |  | 35.48d | 2017-10-25 | 2017-11-19 | 6 |  | 34.5h | 郑丁公 |
| 73 | 2.7.1 | 甘特图 | manual | 4d | 2017-10-25 | 2017-10-28 |  | 张天颖 | 4h | 张天颖 |
| 74 | 2.7.2 | OBS图 | manual | 4d | 2017-10-25 | 2017-10-28 |  | 张晓钒 | 4h | 张晓钒 |
| 75 | 2.7.3 | WBS图 | manual | 4d | 2017-10-29 | 2017-10-31 |  | 张晓钒 | 4h | 张晓钒 |
| 76 | 2.7.4 | 《需求工程计划》-初步 | manual | 6d | 2017-10-27 | 2017-10-31 |  | 嵇德宏 [50%]; 谢正树 [50%] | 6h | 谢正树 |
| 77 | 2.7.5 | 《需求工程计划》第一次评审 | manual | 0.75d | 2017-11-02 | 2017-11-02 | 76 |  |  |  |

| ID | WBS | Task | Type | Duration | Start | Finish | Predecessors | Resources | Work | 负责人 |
| --- | --- | --- | --- | --- | --- | --- | --- | --- | --- | --- |
| 78 | 2.7.6 | **《需求工程计划》-第一次完善** |  | 6.5d | 2017-11-03 | 2017-11-05 | 77 |  | 13.5h | 郑丁公 |
| 79 | 2.7.6.1 | **专题计划要点** |  | 6.5d | 2017-11-03 | 2017-11-05 |  |  | 6h | 谢正树 |
| 80 | 2.7.6.1.1 | 人力资源计划 | milestone, manual | 0.75d | 2017-11-03 | 2017-11-03 |  | 谢正树 | 0.75h |  |
| 81 | 2.7.6.1.2 | 沟通管理计划 | milestone, manual | 0.75d | 2017-11-03 | 2017-11-03 | 80 | 谢正树 | 0.75h |  |
| 82 | 2.7.6.1.3 | 安装部署计划 | milestone, manual | 0.5d | 2017-11-03 | 2017-11-03 | 81 | 谢正树 | 0.5h |  |
| 83 | 2.7.6.1.4 | 培训计划 | milestone, manual | 0.75d | 2017-11-04 | 2017-11-04 | 82 | 谢正树 | 0.75h |  |
| 84 | 2.7.6.1.5 | 配置管理计划 | milestone, manual | 0.75d | 2017-11-04 | 2017-11-04 | 83 | 谢正树 | 0.75h |  |
| 85 | 2.7.6.1.6 | 质量保证计划 | milestone, manual | 0.5d | 2017-11-04 | 2017-11-04 | 84 | 嵇德宏 | 0.5h |  |
| 86 | 2.7.6.1.7 | 预算计划 | milestone, manual | 0.75d | 2017-11-04 | 2017-11-05 | 85 | 嵇德宏 | 0.75h |  |
| 87 | 2.7.6.1.8 | 风险管理计划 | milestone, manual | 0.75d | 2017-11-05 | 2017-11-05 | 86 | 嵇德宏 | 0.75h |  |
| 88 | 2.7.6.1.9 | 系统维护计划 | milestone, manual | 0.5d | 2017-11-05 | 2017-11-05 | 87 | 嵇德宏 | 0.5h |  |
| 89 | 2.7.6.2 | OBS图完善 | manual | 1d | 2017-11-03 | 2017-11-03 | 77 | 张晓钒 | 1h | 张晓钒 |
| 90 | 2.7.6.3 | WBS图完善 | manual | 1d | 2017-11-03 | 2017-11-03 | 77 | 张晓钒 | 1h | 张晓钒 |
| 91 | 2.7.6.4 | 甘特图完善 | manual | 5.5d | 2017-11-03 | 2017-11-05 | 77 | 张天颖 | 5.5h | 张天颖 |
| 92 | 2.7.7 | 《需求工程计划》第二次评审 | manual | 1d | 2017-11-17 | 2017-11-17 | 78 |  |  |  |
| 93 | 2.7.8 | 《需求工程计划》第二次完善 | manual | 3d | 2017-11-17 | 2017-11-19 | 92 | 谢正树 [50%]; 张晓钒 [25%]; 郑丁公 [25%] | 3h |  |
| 94 | 2.7.9 | 《需求工程计划》 | milestone, manual | 0d | 2017-11-19 | 2017-11-19 | 93 |  |  |  |
| 95 | 2.8 | **需求规范说明** |  | 7d | 2017-11-20 | 2017-11-25 | 50 |  | 6h |  |
| 96 | 2.8.1 | 识别需求源头 | manual | 2d | 2017-11-20 | 2017-11-21 | 50 | 郑丁公 [50%]; 张晓钒 [50%] | 2h | 郑丁公 |
| 97 | 2.8.2 | 为每个需求分配惟一标识 | manual | 2d | 2017-11-22 | 2017-11-23 | 96 | 张天颖 [50%]; 张晓钒 [50%] | 2h | 嵇德宏 |
| 98 | 2.8.3 | 描述非功能性需求 | manual | 1d | 2017-11-24 | 2017-11-24 | 97 | 张晓钒 | 1h | 张天颖 |
| 99 | 2.8.4 | 使用需求文档模板 | manual | 1d | 2017-11-25 | 2017-11-25 | 98 | 张晓钒 | 1h | 张晓钒 |
| 100 | 2.9 | **需求验证** |  | 9d | 2017-12-01 | 2017-12-09 | 95 |  | 9h | 张晓钒 |
| 101 | 2.9.1 | 测试需求 | manual | 3d | 2017-12-01 | 2017-12-03 | 95 | 张天颖 [25%]; 谢正树 [50%]; 嵇德宏 [25%] | 3h | 谢正树 |
| 102 | 2.9.2 | 定义验收条件 | manual | 3d | 2017-12-04 | 2017-12-06 | 101 | 张天颖 [40%]; 嵇德宏 [30%]; 谢正树 [30%] | 3h | 张晓钒 |
| 103 | 2.9.3 | 模拟需求 | manual | 3d | 2017-12-07 | 2017-12-09 | 102 | 嵇德宏 [60%]; 郑丁公 [20%]; 谢正树 [20%] | 3h | 嵇德宏 |

| ID | WBS | Task | Type | Duration | Start | Finish | Predecessors | Total slack | Resources | Work | 负责人 |
| --- | --- | --- | --- | --- | --- | --- | --- | --- | --- | --- | --- |
| 104 | 2.10 | **需求项目管理** |  | 8d | 2017-11-26 | 2017-12-03 | 70 |  |  | 8h | 张晓钒 |
| 105 | 2.10.1 | 管理需求风险 | manual | 3d | 2017-11-26 | 2017-11-28 | 70 |  | 嵇德宏 [75%]; 谢正树 [25%] | 3h | 张晓钒 |
| 106 | 2.10.2 | 跟踪记录需求工作量 | manual | 3d | 2017-11-29 | 2017-12-01 | 105 |  | 张天颖 [50%]; 郑丁公 [50%] | 3h | 张天颖 |
| 107 | 2.10.3 | 回顾学到的经验 | manual | 2d | 2017-12-02 | 2017-12-03 | 106 |  | 郑丁公 [80%]; 张晓钒 [20%] | 2h | 郑丁公 |
| 108 | 3 | **《软件需求规格说明书》** |  | 36d | 2017-11-20 | 2017-12-24 | 95 |  |  | 96h | 郑丁公 |
| 109 | 3.1 | UI修改 | manual | 6d | 2017-11-20 | 2017-11-24 | 71 |  | 谢正树; 张晓钒 | 12h |  |
| 110 | 3.2 | **用例图** |  | 8d | 2017-11-20 | 2017-11-26 | 109 | 0d |  | 14h | 嵇德宏 |
| 111 | 3.2.1 | 顶层用例图 | manual | 2d | 2017-11-20 | 2017-11-21 |  |  | 郑丁公 | 2h |  |
| 112 | 3.2.2 | 教师用例图 | manual | 3d | 2017-11-22 | 2017-11-24 | 111 |  | 张天颖 | 3h |  |
| 113 | 3.2.3 | 游客用例图 | manual | 3d | 2017-11-24 | 2017-11-26 | 112 |  | 张天颖 | 3h |  |
| 114 | 3.2.4 | 管理员用例图 | manual | 3d | 2017-11-22 | 2017-11-24 | 111 |  | 嵇德宏 | 3h |  |
| 115 | 3.2.5 | 学生用例图 | manual | 3d | 2017-11-24 | 2017-11-26 | 114 |  | 嵇德宏 | 3h |  |
| 116 | 3.3 | **用例分析** |  | 5d | 2017-11-25 | 2017-11-29 | 110 |  |  | 10h | 嵇德宏 |
| 117 | 3.3.1 | 教师用例分析 | manual | 3d | 2017-11-24 | 2017-11-26 | 112 |  | 张天颖 | 3h |  |
| 118 | 3.3.2 | 游客用例分析 | manual | 2d | 2017-11-27 | 2017-11-28 | 113 |  | 张天颖 | 2h |  |
| 119 | 3.3.3 | 管理员用例分析 | manual | 3d | 2017-11-24 | 2017-11-26 | 114 |  | 嵇德宏 | 3h |  |
| 120 | 3.3.4 | 学生用例分析 | manual | 2d | 2017-11-27 | 2017-11-28 | 115 |  | 嵇德宏 | 2h |  |
| 121 | 3.4 | 网页端原型界面修改 | manual | 4d | 2017-11-25 | 2017-11-28 | 109 |  | 谢正树 | 4h |  |
| 122 | 3.5 | UI更新 | manual | 4d | 2017-11-25 | 2017-11-28 | 109 |  | 郑丁公; 张晓钒 | 8h |  |
| 123 | 3.6 | 《软件需求规格说明书》-初步 | manual | 7d | 2017-12-01 | 2017-12-07 | 95 |  | 嵇德宏 [20%]; 谢正树 [20%]; 张天颖 [20%]; 张晓钒 [20%]; 郑丁公 [20%] | 7h | 郑丁公 |
| 124 | 3.7 | **数据字典** |  | 4d | 2017-11-30 | 2017-12-03 | 116 |  |  | 8h |  |
| 125 | 3.7.1 | 教师数据字典 | manual | 2d | 2017-11-27 | 2017-11-28 | 117 |  | 张天颖 | 2h |  |
| 126 | 3.7.2 | 游客数据字典 | manual | 2d | 2017-11-29 | 2017-11-30 | 118 |  | 张天颖 | 2h |  |
| 127 | 3.7.3 | 管理员数据字典 | manual | 2d | 2017-11-27 | 2017-11-28 | 119 |  | 嵇德宏 | 2h |  |
| 128 | 3.7.4 | 学生数据字典 | manual | 2d | 2017-11-29 | 2017-11-30 | 120 |  | 嵇德宏 | 2h |  |
| 129 | 3.8 | ER图 | manual | 3d | 2017-12-04 | 2017-12-06 | 124 |  |  |  |  |

| ID | WBS | Task | Type | Duration | Start | Finish | Predecessors | Resources | Work | 负责人 |
| --- | --- | --- | --- | --- | --- | --- | --- | --- | --- | --- |
| 130 | 3.9 | **测试用例** |  | 3d | 2017-12-07 | 2017-12-09 |  |  | 6h |  |
| 131 | 3.9.1 | 教师测试用例 | manual | 1d | 2017-12-07 | 2017-12-07 | 125 | 郑丁公 | 1h |  |
| 132 | 3.9.2 | 游客测试用例 | manual | 1d | 2017-12-07 | 2017-12-07 | 126 | 郑丁公 | 1h |  |
| 133 | 3.9.3 | 管理员测试用例 | manual | 1d | 2017-12-08 | 2017-12-08 | 127 | 郑丁公; 张晓钒 | 2h |  |
| 134 | 3.9.4 | 学生测试用例 | manual | 1d | 2017-12-09 | 2017-12-09 | 128 | 郑丁公; 张晓钒 | 2h |  |
| 135 | 3.10 | 用户手册初步编写 | manual | 3d | 2017-12-10 | 2017-12-12 | 130 | 张晓钒 | 3h |  |
| 136 | 3.11 | 教师访谈 | manual | 1d | 2017-12-13 | 2017-12-13 | 135 |  |  |  |
| 137 | 3.12 | 管理员访谈 | manual | 1d | 2017-12-14 | 2017-12-14 | 136 |  |  |  |
| 138 | 3.13 | 测试用例完善 | manual | 2d | 2017-12-15 | 2017-12-16 | 137 | 郑丁公; 张晓钒 | 4h |  |
| 139 | 3.14 | 管理员UI修改 | manual | 2d | 2017-12-17 | 2017-12-18 | 138 | 谢正树 | 2h |  |
| 140 | 3.15 | 对话框图绘制 | manual | 2d | 2017-12-19 | 2017-12-20 | 139 | 张晓钒 | 2h |  |
| 141 | 3.16 | JAD会议及需求冲突解决 | manual | 1d | 2017-12-21 | 2017-12-21 | 140 |  |  |  |
| 142 | 3.17 | 顺序图绘制 | manual | 2d | 2017-12-22 | 2017-12-23 | 141 | 谢正树; 郑丁公 | 4h |  |
| 143 | 3.18 | 关联图更新 | manual | 2d | 2017-12-24 | 2017-12-25 | 142 | 张晓钒 | 2h |  |
| 144 | 3.19 | 用户手册的完善 | manual | 2d | 2017-12-26 | 2017-12-27 | 143 | 张晓钒; 郑丁公 | 4h |  |
| 145 | 3.20 | 《软件需求规格说明书》整合 | manual | 2d | 2017-12-28 | 2017-12-29 | 144 | 郑丁公 | 2h |  |
| 146 | 3.21 | 《软件需求规格说明书》ppt制作 | manual | 2d | 2017-12-30 | 2017-12-31 | 145 | 郑丁公 | 2h |  |
| 147 | 3.22 | 《软件需求规格说明说》评审 | manual | 1d | 2017-12-08 | 2017-12-08 | 123 |  |  |  |
| 148 | 3.23 | 《软件需求规格说明书》-完善 | milestone, manual | 2d | 2017-12-09 | 2017-12-10 | 147 | 嵇德宏 [20%]; 谢正树 [20%]; 张天颖 [20%]; 张晓钒 [20%]; 郑丁公 [20%] | 2h | 郑丁公 |
| 149 | 4 | **《软件需求变更文档》** |  | 21d | 2017-12-25 | 2018-01-14 | 108 |  | 28h | 郑丁公 |
| 150 | 4.1 | 需求管理工具的下载及学习 | manual | 2d | 2017-12-25 | 2017-12-26 |  | 郑丁公 | 2h |  |
| 151 | 4.2 | 需求变更申请 | manual | 3d | 2017-12-27 | 2017-12-29 | 150 | 嵇德宏 | 3h |  |
| 152 | 4.3 | QFD打分 | manual | 4d | 2017-12-30 | 2018-01-02 | 151 | 郑丁公 | 4h |  |
| 153 | 4.4 | CCB委员会成员邀请 | manual | 2d | 2018-01-03 | 2018-01-04 | 152 | 张天颖; 张晓钒 | 4h |  |
| 154 | 4.5 | 《软件需求变更文档》-初步 | manual | 4d | 2018-01-05 | 2018-01-08 | 108 | 嵇德宏 [20%]; 谢正树 [20%]; 张天颖 [20%]; 张晓钒 [20%]; 郑丁公 [20%] | 4h | 郑丁公 |
| 155 | 4.6 | 需求报告书填写 | manual | 2d | 2018-01-09 | 2018-01-10 | 154 | 嵇德宏; 谢正树; 张天颖; 张晓钒; 郑丁公 | 10h |  |
| 156 | 4.7 | 《软件需求变更文档》评审 | manual | 1d | 2018-01-13 | 2018-01-13 | 154 |  |  |  |
| 157 | 4.8 | 《软件需求变更文档》-完善 | milestone, manual | 1d | 2018-01-14 | 2018-01-14 | 156 | 嵇德宏 [20%]; 谢正树 [20%]; 张天颖 [20%]; 张晓钒 [20%]; 郑丁公 [20%] | 1h | 郑丁公 |
| 158 | 5 | 需求工程结尾 | manual | 8d | 2017-12-25 | 2018-01-01 |  |  |  | 郑丁公 |
